# Simple Project Plan

How a schedule from MS Project changed from version to version. A marks actual dates.

## Version 1 (saved 2023-02-06)

Note of the change: Developed Project Schedule and updated project plan

| ID | WBS | Task | Duration | Start | Finish | Predecessors | Complete | Total float | Constraint |
| --- | --- | --- | --- | --- | --- | --- | --- | --- | --- |
| 1 | 1 | **Prepare** | 20d? | 2023-01-17 A | 2023-02-13 |  | 35% | 0d |  |
| 2 |  | Develop Project Proposal Plan | 20d | 2023-01-17 A | 2023-02-13 |  | 65% |  |  |
| 3 |  | M-ECU Project Approval | 0d | 2023-01-22 A | 2023-01-22 A | 2SS | 100% |  |  |
| 4 |  | Agree the purpose of the assessment; | 3d | 2023-01-23 | 2023-01-25 | 3 |  |  |  |
| 5 |  | Identify the scope of the assessment and Authorization Boundary | 2d | 2023-01-23 | 2023-01-24 | 4SS |  |  |  |
| 6 |  | Project Pitch | 6d | 2023-01-23 A | 2023-01-30 A | 3SS | 100% |  |  |
| 7 |  | Organization Structure, Responsibilities & Stakeholders Identification | 3d | 2023-01-23 | 2023-01-25 | 5SS |  |  |  |
| 8 |  | Identify the assumptions and constraints associated with the assessment; | 1d? | 2023-01-26 | 2023-01-26 | 7 |  |  |  |
| 9 |  | Identify the sources of information to be used as inputs to the assessment; | 3d | 2023-01-26 | 2023-01-30 | 7 |  |  |  |
| 10 |  | Identify the risk model and analytic approaches (i.e., assessment and analysis approaches) to be employed during the assessment. | 4d | 2023-01-31 | 2023-02-03 | 9 |  |  |  |
| 11 |  | Issuance of Project Endorsement Letter | 0d | 2023-02-10 | 2023-02-10 |  |  |  |  |
| 12 |  | Management Project Approval | 1d? | 2023-02-10 | 2023-02-10 | 11FF |  |  |  |
| 13 |  | Portfolio Submission | 11d | 2023-01-30 | 2023-02-13 | 2FF |  |  |  |
| 14 | 2 | **Conduct** | 96d? | 2023-02-13 | 2023-06-26 |  |  | 0d |  |
| 15 |  | Review of the Regulatory Guidelines for harmonization - CBN & NIST | 62d | 2023-02-13 | 2023-05-09 | 12 |  |  |  |
| 16 |  | Business Environment & Threat Landscape | 3d | 2023-02-13 | 2023-02-15 | 15SS |  |  |  |
| 17 |  | Identify threat sources that are relevant to organizations; | 3d | 2023-02-16 | 2023-02-20 | 16 |  |  |  |
| 18 |  | Identify threat events that could be produced by those sources; | 3d | 2023-02-21 | 2023-02-23 | 17 |  |  |  |
| 19 |  | Hardware and Network Identification (associated the hardware, software, firmware, and systems) | 3d | 2023-02-13 | 2023-02-15 | 15SS |  |  |  |
| 20 |  | Review of Policies and Processes relating to Cyber Security - Physical & System Securities in place | 5d | 2023-02-13 | 2023-02-17 | 15SS |  |  |  |
| 21 |  | Identify vulnerabilities within organizations that could be exploited by threat sources through specific threat events and the predisposing conditions that could affect successful exploitation; | 8d | 2023-02-21 | 2023-03-02 | 17 |  |  |  |
| 22 |  | Determine the likelihood that the identified threat sources would initiate specific threat events and the likelihood that the threat events would be successful; | 1d? | 2023-02-21 | 2023-02-21 | 21SS |  |  |  |
| 23 |  | Determine the adverse impacts to organizational operations and assets, individuals, other organizations, and the Nation resulting from the exploitation of vulnerabilities by threat sources (through specific threat events) | 3d | 2023-02-22 | 2023-02-24 | 22 |  |  |  |
| 24 |  | Determine information security risks as a combination of likelihood of threat exploitation of vulnerabilities and the impact of such exploitation, including any uncertainties associated with the risk determinations. | 86d | 2023-02-27 | 2023-06-26 | 23 |  |  |  |
| 25 | 3 | **Communicate** | 135d | 2023-02-14 | 2023-08-21 |  |  | 0d |  |
| 26 |  | Develop the Risk Assessment Report | 1d | 2023-08-17 | 2023-08-17 | 13, 24FF |  | 2d | finish no earlier than 2023-08-17 |
| 27 |  | Share information developed in the execution of the risk assessment, to support other risk management activities. | 3d | 2023-02-27 | 2023-03-01 |  |  |  |  |
| 28 |  | Mid-Project Discussions | 66d | 2023-02-14 | 2023-05-16 |  |  |  |  |
| 29 |  | Project Completion Meeting | 0d | 2023-08-18 | 2023-08-18 | 26 |  |  |  |
| 30 |  | Submission of Report to ECU | 0d | 2023-08-21 | 2023-08-21 |  |  |  |  |

## Version 2 (saved 2023-02-21)

Note of the change: Updated Project Status

Last finish stays 2023-08-21. Complete tasks 2 → 8.

Added:

| ID | Task | Duration | Start | Finish | Predecessors |
| --- | --- | --- | --- | --- | --- |
| 13 | Revise Project Proposal Based on Feedback Received | 2d | 2023-02-21 A | 2023-02-22 A | 2FS+5d |
| 14 | Compile Portfolio Items | 9d | 2023-02-23 A | 2023-03-07 | 2FF, 13 |

Changed:

| ID | Task | Start | Finish | Duration | Complete | Total float | Predecessors |
| --- | --- | --- | --- | --- | --- | --- | --- |
| 1 | **Prepare** |  | 2023-02-13 → 2023-03-07 (+22d) | 20d? → 36d? | 35% → 79% | 0d → 118d |  |
| 2 | Develop Project Proposal Plan |  | 2023-02-13 A |  | 65% → 100% |  |  |
| 3 | M-ECU Project Approval |  |  | 0d → 1d |  |  |  |
| 4 | Agree the purpose of the assessment; | 2023-01-23 A | 2023-01-25 → 2023-01-27 A (+2d) | 3d → 5d | 0% → 100% |  |  |
| 5 | Identify the scope of the assessment and Authorization Boundary | 2023-01-23 A | 2023-01-24 → 2023-01-27 A (+3d) | 2d → 5d | 0% → 100% |  |  |
| 7 | Organization Structure, Responsibilities & Stakeholders Identification | 2023-01-23 A |  |  | 0% → 75% |  |  |
| 11 | Issuance of Project Endorsement Letter | 2023-02-10 → 2023-02-06 A (-4d) | 2023-02-10 → 2023-02-06 A (-4d) |  | 0% → 100% |  |  |
| 12 | Management Project Approval | 2023-02-10 → 2023-02-03 A (-7d) | 2023-02-10 → 2023-02-03 A (-7d) | 1d? → 0d | 0% → 100% |  |  |
| 15 | Portfolio Submission | 2023-01-30 → 2023-03-07 (+36d) | 2023-02-13 → 2023-03-07 (+22d) | 11d → 0d |  | none → 118d | 2FF → 14 |

## Version 3 (saved 2023-02-21)

Note of the change: Feedback Map and Project Status Updated

Last finish stays 2023-08-21.

Changed:

| ID | Task | Predecessors |
| --- | --- | --- |
| 11 | Management Project Approval | 12FF → 3 |
| 12 | Issuance of Project Endorsement Letter | none → 11 |

## Version 4 (saved 2023-03-20)

Note of the change: Project update

Last finish stays 2023-08-21.

Changed:

| ID | Task | Duration |
| --- | --- | --- |
| 1 | **Prepare** | 36d? → 36d |
